# Автоматизация системы проведения тендеров

Schedule from MS Project, 2025-04-21 to 2025-10-31, costs in ₽.

## Calendars

- Стандартный: Mon-Fri 09:00-13:00, 14:00-18:00; Sat-Sun off.

## Resources

| Resource | Rate |
| --- | --- |
| Бизнес-аналитик | 1200 |
| Проектный менеджер | 1250 |
| Ведущий backend-разработчик | 2000 |
| Backend-разработчик | 1750 |
| Frontend-разработчик | 1125 |
| QA-инженер | 937 |
| ML-инженер | 1750 |
| Разметчик | 620 |
| DevOps | 1800 |
| Специалист баз данных | 788 |
| Техническая поддержка |  |

## Schedule

| ID | WBS | Task | Duration | Start | Finish | Predecessors | Total slack | Free slack | Constraint | Resources | Work | Cost |
| --- | --- | --- | --- | --- | --- | --- | --- | --- | --- | --- | --- | --- |
| 1 | 1 | **Формирование требований** | 12d | 2025-04-21 | 2025-05-06 |  | 3d |  |  |  | 96h | 117,200 |
| 2 | 1.1 | Проведение аудита существующей системы (Coupa Sourcing) | 5d | 2025-04-21 | 2025-04-25 |  | 3d | 0d |  | Бизнес-аналитик | 40h | 48,000 |
| 3 | 1.2 | Определение бизнес-целей автоматизации процесса проведения тендеров | 2d | 2025-04-28 | 2025-04-29 | 2 | 3d | 0d |  | Бизнес-аналитик | 16h | 19,200 |
| 4 | 1.3 | Оценка ресурсов и сроков проекта | 5d | 2025-04-30 | 2025-05-06 | 3 | 3d |  |  | Проектный менеджер | 40h | 50,000 |
| 5 | 2 | **Разработка концепции системы** | 15d | 2025-05-12 | 2025-05-30 | 1 | 0d |  |  |  | 160h | 246,000 |
| 6 | 2.1 | Формализация текущего бизнес-процесса проведения тендера | 5d | 2025-05-12 | 2025-05-16 | 3 | 0d |  | start no earlier than 2025-05-12 | Бизнес-аналитик | 40h | 48,000 |
| 7 | 2.2 | Определение функциональных и технических требований к автоматизированной системе | 5d | 2025-05-19 | 2025-05-23 | 6 | 0d |  |  | Ведущий backend-разработчик; Бизнес-аналитик | 80h | 128,000 |
| 8 | 2.3 | Оценка и выбор ИИ-модели для проекта | 5d | 2025-05-26 | 2025-05-30 | 3, 7 | 0d |  |  | ML-инженер | 40h | 70,000 |
| 9 | 3 | **Техническое задание** | 10d | 2025-06-02 | 2025-06-13 | 5 | 0d |  |  |  | 240h | 356,000 |
| 10 | 3.1 | Разработка и утверждение ТЗ по автоматизации системы проведения тендеров | 10d | 2025-06-02 | 2025-06-13 | 8 | 0d |  |  | Ведущий backend-разработчик; Проектный менеджер; Бизнес-аналитик | 240h | 356,000 |
| 11 | 4 | **Эскизный проект** | 10d | 2025-06-16 | 2025-06-27 | 9 | 0d |  |  |  | 304h | 307,720 |
| 12 | 4.1 | Разработка обновленной архитектуры системы | 5d | 2025-06-16 | 2025-06-20 | 10 | 0d |  |  | Ведущий backend-разработчик | 40h | 80,000 |
| 13 | 4.2 | Интеграция Coupa Sourcing SDK/API | 5d | 2025-06-23 | 2025-06-27 | 10, 12 | 0d |  |  | Backend-разработчик | 40h | 70,000 |
| 14 | 4.3 | Проектирование обновленного пользовательского интерфейса | 3d | 2025-06-23 | 2025-06-25 | 10 | 2d |  | start no earlier than 2025-06-23 | Frontend-разработчик | 24h | 27,000 |
| 15 | 4.4 | Разметка данных для LLM -запроса | 10d | 2025-06-16 | 2025-06-27 | 10 | 0d |  |  | Разметчик [200%] | 160h | 99,200 |
| 16 | 4.5 | Разработка проекта базы данных | 5d | 2025-06-16 | 2025-06-20 | 10 | 5d |  |  | Специалист баз данных | 40h | 31,520 |
| 17 | 5 | **V Технический проект** | 38d | 2025-06-30 | 2025-08-20 | 11 | 0d |  |  |  | 680h | 1,051,520 |
| 18 | 5.1 | Подключение LLM модели по API | 2d | 2025-06-30 | 2025-07-01 | 10 | 6d | 0d | start no earlier than 2025-06-14 | ML-инженер | 16h | 28,000 |
| 19 | 5.2 | Разработка и тестирование модели нейронной сети BERT | 5d | 2025-07-02 | 2025-07-08 | 18 | 6d | 0d |  | ML-инженер | 40h | 70,000 |
| 20 | 5.3 | Разработка модуля загрузки и обработки документации | 10d | 2025-06-30 | 2025-07-11 | 13 | 0d |  |  | Backend-разработчик | 80h | 140,000 |
| 21 | 5.4 | Разработка модуля генерации NDA | 5d | 2025-07-14 | 2025-07-18 | 20 | 0d |  |  | Backend-разработчик | 40h | 70,000 |
| 22 | 5.5 | Интеграция с системой электронной подписи | 3d | 2025-07-21 | 2025-07-23 | 21 | 0d |  |  | Ведущий backend-разработчик | 24h | 48,000 |
| 23 | 5.6 | Разработка веб-интерфейса формы создания тендера | 5d | 2025-06-30 | 2025-07-04 | 14 | 8d | 0d | start no earlier than 2025-06-26 | Frontend-разработчик | 40h | 45,000 |
| 24 | 5.7 | Разработка веб-интерфейса формы подачи предложения | 5d | 2025-07-07 | 2025-07-11 | 23 | 8d |  |  | Frontend-разработчик | 40h | 45,000 |
| 25 | 5.8 | Настройка базы данных | 5d | 2025-06-30 | 2025-07-04 | 16 | 8d | 2d |  | Специалист баз данных | 40h | 31,520 |
| 26 | 5.9 | Оценка работы ИИ моделей | 5d | 2025-07-09 | 2025-07-15 | 25, 19 | 6d |  |  | ML-инженер | 40h | 70,000 |
| 27 | 5.10 | Интеграция функциональных компонентов и веб-клиента | 10d | 2025-07-24 | 2025-08-06 | 26, 24, 22 | 0d |  | start no earlier than 2025-07-14 | Backend-разработчик; DevOps; Frontend-разработчик | 240h | 374,000 |
| 28 | 5.11 | Разработка технической документации | 10d | 2025-08-07 | 2025-08-20 | 27 | 0d |  |  | Ведущий backend-разработчик; Проектный менеджер [50%] | 80h | 130,000 |

| ID | WBS | Task | Duration | Start | Finish | Predecessors | Total slack | Resources | Work | Cost |
| --- | --- | --- | --- | --- | --- | --- | --- | --- | --- | --- |
| 29 | 6 | **VI Тестирование и отладка** | 19d | 2025-08-21 | 2025-09-16 | 17 | 0d |  | 152h | 142,424 |
| 30 | 6.1 | Проведение функциональных тестов | 7d | 2025-08-21 | 2025-08-29 | 28 | 0d | QA-инженер | 56h | 52,472 |
| 31 | 6.2 | Тестирование UI/UX | 5d | 2025-09-01 | 2025-09-05 | 30 | 0d | QA-инженер | 40h | 37,480 |
| 32 | 6.3 | Нагрузочное тестирование | 7d | 2025-09-08 | 2025-09-16 | 31 | 0d | QA-инженер | 56h | 52,472 |
| 33 | 7 | **VII Этап внедрения** | 18d | 2025-09-17 | 2025-10-10 | 29 | 0d |  | 184h | 284,280 |
| 34 | 7.1 | Развертывание обновленной инфраструктуры | 2d | 2025-09-17 | 2025-09-18 | 32 | 0d | DevOps | 16h | 28,800 |
| 35 | 7.2 | Проведение предварительных испытаний | 5d | 2025-09-19 | 2025-09-25 | 34 | 0d | DevOps; QA-инженер | 80h | 109,480 |
| 36 | 7.3 | Проведение приемочных испытаний | 5d | 2025-09-26 | 2025-10-02 | 35 | 0d | Проектный менеджер | 40h | 50,000 |
| 37 | 7.4 | Подготовка эксплуатационной документации | 5d | 2025-10-03 | 2025-10-09 | 36 | 0d | Ведущий backend-разработчик | 40h | 80,000 |
| 38 | 7.5 | Проведение обучающих мероприятий | 1d | 2025-10-10 | 2025-10-10 | 37 | 0d | Ведущий backend-разработчик | 8h | 16,000 |
| 39 | 8 | **VIII Сопровождение** | 15d | 2025-10-13 | 2025-10-31 | 33 | 0d |  | 12h | 24,000 |
| 40 | 8.1 | Выполнение работ по гарантийным обязательствам | 15d | 2025-10-13 | 2025-10-31 | 38 | 0d | Ведущий backend-разработчик [10%] | 12h | 24,000 |
